# Sistema de Control de Nivel de Líquido en Tanques

Schedule from MS Project, 2011-09-14 to 2012-05-07, costs in $.
Gobant

## Calendars

- Standard: Mon-Fri 08:00-12:00, 13:00-17:00; Sat-Sun off.

## Resources

| Resource | Rate |
| --- | --- |
| Pablo D. Roca | 1 |
| Ezequiel Di Donato | 1 |
| Emmanuel Espina |  |

## Schedule

| ID | WBS | Task | Duration | Start | Finish | Predecessors | Total slack | Free slack | Resources | Work | Cost |
| --- | --- | --- | --- | --- | --- | --- | --- | --- | --- | --- | --- |
| 1 | 1 | Planificacion | 1d? | 2011-09-14 | 2011-09-19 |  | 10d | 1d | Pablo D. Roca; Ezequiel Di Donato | 16h | 16 |
| 2 | 2 | **Documentación** | 34d? | 2011-09-20 | 2011-11-07 | 1 | 10d | 1d |  | 140h | 140 |
| 3 | 2.1 | Análisis | 1.88d? | 2011-09-20 | 2011-09-29 |  | 10d | 0d | Pablo D. Roca; Ezequiel Di Donato | 30h | 30 |
| 4 | 2.2 | Revisión análisis | 0.62d? | 2011-11-01 | 2011-11-03 | 3 | 12d |  | Pablo D. Roca; Ezequiel Di Donato | 10h | 10 |
| 5 | 2.3 | Diseño | 2.5d? | 2011-09-29 | 2011-10-13 | 3 | 10d | 0d | Pablo D. Roca; Ezequiel Di Donato | 40h | 40 |
| 6 | 2.4 | Revisión Diseño | 0.62d? | 2011-11-03 | 2011-11-07 | 5 | 10d |  | Pablo D. Roca; Ezequiel Di Donato | 10h | 10 |
| 7 | 2.5 | Diseño Detallado | 2.5d? | 2011-10-13 | 2011-10-27 | 5 | 15d | 0d | Pablo D. Roca; Ezequiel Di Donato | 40h | 40 |
| 8 | 2.6 | Revisión Diseño Detallado | 0.62d? | 2011-10-27 | 2011-10-31 | 7 | 15d |  | Pablo D. Roca; Ezequiel Di Donato | 10h | 10 |
| 9 | 3 | **Configuración de Infraestructura (hardware)** | 28d? | 2011-11-08 | 2011-12-16 | 2 | 0d |  |  | 110h | 98.67 |
| 10 | 3.1 | Conexionado Inicial y Pruebas Preliminares | 2.5d? | 2011-11-25 | 2011-12-08 |  | 0d |  | Ezequiel Di Donato | 20h | 20 |
| 11 | 3.2 | Pruebas de Adquisición de Datos desde Placa RIAC | 2.5d? | 2011-11-08 | 2011-11-21 |  | 13d |  | Pablo D. Roca | 20h | 20 |
| 12 | 3.3 | Pruebas de Control del Actuador desde Matlab | 3.25d? | 2011-11-08 | 2011-11-24 |  | 10d |  | Ezequiel Di Donato | 26h | 26 |
| 13 | 3.4 | Pruebas de Lectura de Configuración desde Código Matlab | 1.25d? | 2011-11-22 | 2011-11-28 |  | 8d |  | Pablo D. Roca | 10h | 10 |
| 14 | 3.5 | Definición de Interface Contra Set de Control ABB | 1.83d? | 2011-12-09 | 2011-12-14 | 10, 11, 12, 13 | 2d |  | Pablo D. Roca; Ezequiel Di Donato; Emmanuel Espina | 22h | 14.67 |
| 15 | 3.6 | Definición de Interface Contra Sensor Siemens | 1d? | 2011-12-09 | 2011-12-16 | 10, 11, 12, 13 | 0d |  | Pablo D. Roca; Ezequiel Di Donato; Emmanuel Espina | 12h | 8 |
| 16 | 4 | **Implementación de Interfaces Set de Cotrol ABB y Sensor Siemens** | 21.25d? | 2011-12-19 | 2012-01-17 | 9 | 25.75d |  |  | 170h |  |
| 17 | 4.1 | Desarrollo Interface Contra Set de Control ABB | 10.62d? | 2011-12-19 | 2012-01-02 |  | 36.38d |  | Emmanuel Espina | 85h |  |
| 18 | 4.2 | Desarrollo Interface Contra Sensor Siemens | 10.62d? | 2012-01-02 | 2012-01-17 |  | 25.75d |  | Emmanuel Espina | 85h |  |
| 19 | 5 | **Desarrollo de Software (excluyendo comunicación con Set de Control ABB y Sensor Siemens)** | 47d? | 2011-12-16 | 2012-02-21 | 9 | 0d |  |  | 170h | 170 |
| 20 | 5.1 | CU 1 Instalar la Estación de Control | 1.5d? | 2012-01-27 | 2012-02-06 |  | 11d |  | Ezequiel Di Donato; Pablo D. Roca | 16h | 16 |
| 21 | 5.2 | CU 2 Configurar Parámetros Avanzados | 1.25d? | 2012-02-06 | 2012-02-13 |  | 6d |  | Pablo D. Roca | 10h | 10 |
| 22 | 5.3 | CU 3 Conectarse al Set de Control Elegido | 2.5d? | 2011-12-16 | 2011-12-30 |  | 34d | 0d | Ezequiel Di Donato | 20h | 20 |
| 23 | 5.4 | CU 4 Desconectarse del Set de Control | 0.75d? | 2011-12-30 | 2012-01-04 | 22 | 34d |  | Ezequiel Di Donato | 6h | 6 |
| 24 | 5.5 | CU 5 Ampliar la Gráfica del Proceso | 2.5d? | 2012-01-04 | 2012-01-18 |  | 24d |  | Ezequiel Di Donato | 20h | 20 |
| 25 | 5.6 | CU 6 Modificar Párametro de Control | 2.5d? | 2012-01-17 | 2012-01-31 |  | 15d |  | Pablo D. Roca | 20h | 20 |
| 26 | 5.7 | CU 7 Guardar Configuración de Control Automático | 1d? | 2012-02-02 | 2012-02-08 |  | 9d |  | Ezequiel Di Donato | 8h | 8 |
| 27 | 5.8 | CU 8 Iniciar Grabación del Proceso | 3.25d? | 2011-12-16 | 2012-01-04 |  | 0d |  | Pablo D. Roca | 26h | 26 |
| 28 | 5.9 | CU 9 Finalizar Grabación del Proceso | 2.25d? | 2012-01-04 | 2012-01-17 | 27 | 25d |  | Pablo D. Roca | 18h | 18 |
| 29 | 5.10 | CU 10 Agregar Comentario Durante la Grabación del Proceso | 1.5d? | 2012-02-13 | 2012-02-21 | 27 | 0d |  | Pablo D. Roca | 12h | 12 |
| 30 | 5.11 | CU 11 Cargar Proceso Grabado | 1.75d? | 2012-01-18 | 2012-01-27 |  | 17d |  | Ezequiel Di Donato | 14h | 14 |

| ID | WBS | Task | Duration | Start | Finish | Predecessors | Total slack | Resources | Work | Cost |
| --- | --- | --- | --- | --- | --- | --- | --- | --- | --- | --- |
| 31 | 6 | **Integración Implementaciones Set de Control ABB y Sensor Siemens** | 22d? | 2012-02-21 | 2012-03-22 | 16, 19 | 0d |  | 88h | 44 |
| 32 | 6.1 | Integración CU 1 Instalar la Estación de Control | 1d? | 2012-02-21 | 2012-02-23 |  | 0d | Ezequiel Di Donato; Emmanuel Espina | 8h | 4 |
| 33 | 6.2 | Integración CU 2 Configurar Parámetros Avanzados | 1d? | 2012-02-23 | 2012-02-27 | 32 | 0d | Pablo D. Roca; Emmanuel Espina | 8h | 4 |
| 34 | 6.3 | Integración CU 3 Conectarse al Set de Control Elegido | 1d? | 2012-02-27 | 2012-02-29 | 33 | 0d | Ezequiel Di Donato; Emmanuel Espina | 8h | 4 |
| 35 | 6.4 | Integración CU 4 Desconectarse del Set de Control | 1d? | 2012-02-29 | 2012-03-02 | 34 | 0d | Pablo D. Roca; Emmanuel Espina | 8h | 4 |
| 36 | 6.5 | Integración CU 5 Ampliar la Gráfica del Proceso | 1d? | 2012-03-02 | 2012-03-06 | 35 | 0d | Ezequiel Di Donato; Emmanuel Espina | 8h | 4 |
| 37 | 6.6 | Integración CU 6 Modificar Párametro de Control | 1d? | 2012-03-06 | 2012-03-08 | 36 | 0d | Pablo D. Roca; Emmanuel Espina | 8h | 4 |
| 38 | 6.7 | Integración CU 7 Guardar Configuración de Control Automático | 1d? | 2012-03-08 | 2012-03-12 | 37 | 0d | Ezequiel Di Donato; Emmanuel Espina | 8h | 4 |
| 39 | 6.8 | Integración CU 8 Iniciar Grabación del Proceso | 1d? | 2012-03-12 | 2012-03-14 | 38 | 0d | Pablo D. Roca; Emmanuel Espina | 8h | 4 |
| 40 | 6.9 | Integración CU 9 Finalizar Grabación del Proceso | 1d? | 2012-03-14 | 2012-03-16 | 39 | 0d | Ezequiel Di Donato; Emmanuel Espina | 8h | 4 |
| 41 | 6.10 | Integración CU 10 Agregar Comentario Durante la Grabación del Proceso | 1d? | 2012-03-16 | 2012-03-20 | 40 | 0d | Pablo D. Roca; Emmanuel Espina | 8h | 4 |
| 42 | 6.11 | Integración CU 11 Cargar Proceso Grabado | 1d? | 2012-03-20 | 2012-03-22 | 41 | 0d | Ezequiel Di Donato; Emmanuel Espina | 8h | 4 |
| 43 | 7 | **Prueba del Software Sistema (excepto Set de Control ABB y Sensor Siemens)** | 15d? | 2012-03-22 | 2012-04-12 | 31 | 0d |  | 60h | 60 |
| 44 | 7.1 | Pruebas de Casos de Test | 2.5d? | 2012-03-22 | 2012-04-05 |  | 0d | Pablo D. Roca; Ezequiel Di Donato | 40h | 40 |
| 45 | 7.2 | Pruebas de Aceptación Internas | 1.25d? | 2012-04-05 | 2012-04-12 | 44 | 0d | Pablo D. Roca; Ezequiel Di Donato | 20h | 20 |
| 46 | 8 | **Prueba del Software Sistema Completo** | 12d? | 2012-04-12 | 2012-04-30 | 19, 31 | 0d |  | 70h | 46.67 |
| 47 | 8.1 | Pruebas de Casos de Test | 4.17d? | 2012-04-12 | 2012-04-24 | 45 | 0d | Pablo D. Roca; Ezequiel Di Donato; Emmanuel Espina | 50h | 33.33 |
| 48 | 8.2 | Pruebas de Aceptación Internas sobre Producto Completo | 1.67d? | 2012-04-25 | 2012-04-30 | 47 | 0d | Pablo D. Roca; Ezequiel Di Donato; Emmanuel Espina | 20h | 13.33 |
| 49 | 9 | **Presentación y Entrega Final del Producto** | 5d? | 2012-04-30 | 2012-05-07 | 46, 43 | 0d |  | 20h | 20 |
| 50 | 9.1 | Redacción de manuales | 0.62d? | 2012-04-30 | 2012-05-02 |  | 0d | Pablo D. Roca; Ezequiel Di Donato | 10h | 10 |
| 51 | 9.2 | Presentación | 0.62d? | 2012-05-02 | 2012-05-07 | 50 | 0d | Pablo D. Roca; Ezequiel Di Donato | 10h | 10 |
